# Cronograma_Eventos_v3

Schedule from MS Project, 2014-08-11 to 2014-10-17, A marks actual dates.
Clique & Brinde

## Calendars

- Padrão: Mon-Fri 09:00-12:00, 13:00-18:00; Sat-Sun off. Exceptions (off unless hours are given): 2014-09-07 (Feriado), 2014-10-12 (Feriado), 2014-10-15 (Feriado).

## Resources

| Resource |
| --- |
| Gustavo |
| Beatriz |
| Marco Aurélio |
| Allan |
| Mariana |
| Denis |
| Matheus,Marco Antonio |

## Schedule

| ID | WBS | Task | Duration | Start | Finish | Predecessors | Complete | Remaining | Total slack | Free slack | Constraint | Resources | Work | Actual work |
| --- | --- | --- | --- | --- | --- | --- | --- | --- | --- | --- | --- | --- | --- | --- |
| 1 | 1 | **Projeto Eventos** | 48.62d? | 2014-08-11 A | 2014-10-17 |  | 28% | 34.77d? | 0d |  |  |  | 1317.2h | 583.6h |
| 2 | 1.1 | **Documentação** | 20d | 2014-08-21 A | 2014-09-17 |  | 57% | 8.69d | 21d |  |  |  | 376h | 235.2h |
| 3 | 1.1.1 | Documento de arquitetura | 6d | 2014-08-25 A | 2014-09-01 |  | 70% | 1.8d | 33d |  | start no earlier than 2014-08-25 | Gustavo | 48h | 33.6h |
| 4 | 1.1.2 | Documento de Requisitos | 6d | 2014-08-25 A | 2014-09-01 |  | 95% | 0.3d | 1.6d | 0d | start no earlier than 2014-08-25 | Beatriz | 48h | 45.6h |
| 5 | 1.1.3 | Casos de uso | 4d | 2014-09-02 A | 2014-09-05 | 4 | 40% | 2.4d | 0.3d | 0d |  | Beatriz; Gustavo | 64h | 25.6h |
| 6 | 1.1.4 | Diagrama de classe | 3d | 2014-09-08 A | 2014-09-10 | 5 | 10% | 2.7d | 26d |  | start no earlier than 2014-08-11 | Gustavo | 24h | 2.4h |
| 7 | 1.1.5 | Diagrama de atividade | 4d | 2014-09-08 | 2014-09-11 | 5 |  |  | 21d | 0d |  | Beatriz | 32h |  |
| 8 | 1.1.6 | Diagrama de sequencia | 4d | 2014-09-12 | 2014-09-17 | 7 |  |  | 21d |  |  | Gustavo | 32h |  |
| 9 | 1.1.7 | Wireframe | 8d | 2014-08-21 A | 2014-09-01 A |  | 100% |  |  |  | start no earlier than 2014-08-21 | Marco Aurélio; Allan | 128h | 128h |
| 11 | 1.2 | **Desenvolvimento** | 48.62d? | 2014-08-11 A | 2014-10-17 |  | 21% | 38.51d? | 0d |  |  |  | 941.2h | 348.4h |
| 12 | 1.2.1 | **Camada de interface** | 48.62d? | 2014-08-11 A | 2014-10-17 |  | 33% | 32.41d? | 0d |  |  |  | 909.2h | 348.4h |
| 13 | 1.2.1.1 | Escolha do framework da camada de interface | 4d | 2014-08-11 A | 2014-08-15 A |  | 100% |  |  |  | finish no earlier than 2014-08-15 | Marco Aurélio | 32h | 32h |
| 14 | 1.2.1.2 | Desenvolvimento do template padrão | 11d | 2014-09-01 A | 2014-09-15 | 13 | 85% | 1.65d | 23d |  |  | Allan; Marco Aurélio | 101.2h | 74.8h |
| 15 | 1.2.1.3 | Treinamento da equipe no Bootstrap | 5d | 2014-09-08 A | 2014-09-12 A |  | 100% |  |  |  | start no earlier than 2014-09-08 | Mariana; Allan; Marco Aurélio; Denis | 160h | 160h |
| 16 | 1.2.1.4 | **Desenvolvimento das telas** | 48.62d? | 2014-08-11 A | 2014-10-17 |  | 11% | 43.12d? | 0d |  |  |  | 616h | 81.6h |
| 17 | 1.2.1.4.1 | Pagina inicial | 1d? | 2014-08-11 | 2014-08-12 |  |  |  | 47.62d |  |  |  |  |  |
| 18 | 1.2.1.4.2 | **Ambiente Gestor** | 1d? | 2014-08-11 | 2014-08-12 |  |  |  | 47.62d |  |  |  |  |  |
| 19 | 1.2.1.4.2.1 | Cadastro de usuarios | 1d? | 2014-08-11 | 2014-08-12 |  |  |  | 47.62d |  |  |  |  |  |
| 20 | 1.2.1.4.2.2 | Cadastro de eventos | 1d? | 2014-08-11 | 2014-08-12 |  |  |  | 47.62d |  |  |  |  |  |
| 21 | 1.2.1.4.2.3 | Cadastro de atividades | 1d? | 2014-08-11 | 2014-08-12 |  |  |  | 47.62d |  |  |  |  |  |
| 22 | 1.2.1.4.2.4 | Cadastro de salas | 1d? | 2014-08-11 | 2014-08-12 |  |  |  | 47.62d |  |  |  |  |  |
| 23 | 1.2.1.4.2.5 | Relatórios | 1d? | 2014-08-11 | 2014-08-12 |  |  |  | 47.62d |  |  |  |  |  |
| 24 | 1.2.1.4.2.6 | Alteração de presença | 1d? | 2014-08-11 | 2014-08-12 |  |  |  | 47.62d |  |  |  |  |  |
| 27 | 1.2.1.4.3 | **Ambiente Usuário** | 29d | 2014-09-08 A | 2014-10-17 |  | 13% | 25.22d | 0d |  |  |  | 616h | 81.6h |
| 28 | 1.2.1.4.3.1 | Tela inicial | 3d | 2014-10-07 A | 2014-10-09 | 32 | 60% | 1.2d | 5d |  | start no earlier than 2014-09-22 | Mariana | 24h | 14.4h |
| 29 | 1.2.1.4.3.2 | Login | 2d | 2014-09-30 | 2014-10-01 | 36 |  |  | 11d |  | start no earlier than 2014-09-08 | Allan | 16h |  |
| 30 | 1.2.1.4.3.3 | Dados pessoais do usuário (consutar e alterar) | 3d | 2014-09-30 | 2014-10-02 | 36 |  |  | 0d |  | start no earlier than 2014-09-22 | Denis | 24h |  |
| 31 | 1.2.1.4.3.4 | Inscrições do usuário (agenda/certificado) | 10d | 2014-10-03 | 2014-10-17 | 30 |  |  | 0d |  | start no earlier than 2014-09-08 | Marco Aurélio; Allan | 160h |  |
| 32 | 1.2.1.4.3.5 | Cadastro de usuarios no site | 5d | 2014-09-30 | 2014-10-06 | 36 |  |  | 1.8d | 0d | start no earlier than 2014-09-08 | Mariana | 40h |  |
| 33 | 1.2.1.4.3.6 | Seleção de eventos | 6d | 2014-09-08 A | 2014-09-15 |  | 70% | 1.8d | 0d |  | start no earlier than 2014-09-08 | Marco Aurélio; Allan | 96h | 67.2h |
| 34 | 1.2.1.4.3.7 | Evento selecionado | 5d | 2014-09-16 | 2014-09-22 | 33 |  |  | 0d |  | start no earlier than 2014-09-08 | Marco Aurélio; Allan | 80h |  |
| 35 | 1.2.1.4.3.8 | Inscrição atividade | 5d | 2014-09-23 | 2014-09-29 | 34 |  |  | 0d |  | start no earlier than 2014-09-08 | Mariana; Marco Aurélio | 80h |  |
| 36 | 1.2.1.4.3.9 | Atividade selecionada | 5d | 2014-09-23 | 2014-09-29 | 35FF |  |  | 0d |  | start no earlier than 2014-09-08 | Denis; Allan | 80h |  |
| 37 | 1.2.1.4.3.10 | Contato | 2d | 2014-09-15 | 2014-09-16 |  |  |  | 22d |  | start no earlier than 2014-09-15 | Denis | 16h |  |

| ID | WBS | Task | Duration | Start | Finish | Predecessors | Total slack | Free slack | Constraint | Resources | Work |
| --- | --- | --- | --- | --- | --- | --- | --- | --- | --- | --- | --- |
| 40 | 1.2.2 | **Camada de negócios** | 8d? | 2014-09-12 | 2014-09-23 |  | 17d |  |  |  | 32h |
| 41 | 1.2.2.1 | Definição do modelo de desenvolvimento | 4d | 2014-09-12 | 2014-09-17 |  | 18d | 0d | start no earlier than 2014-09-12 | Matheus,Marco Antonio | 32h |
| 42 | 1.2.2.2 | **Criação das classes** | 3d | 2014-09-18 | 2014-09-22 |  | 18d |  |  |  |  |
| 43 | 1.2.2.2.1 | participante | 3d | 2014-09-18 | 2014-09-22 | 41 | 18d |  |  |  |  |
| 44 | 1.2.2.2.2 | endereço | 3d | 2014-09-18 | 2014-09-22 | 41 | 18d |  |  |  |  |
| 45 | 1.2.2.2.3 | grauinstrucao | 3d | 2014-09-18 | 2014-09-22 | 41 | 18d |  |  |  |  |
| 46 | 1.2.2.2.4 | perfil | 3d | 2014-09-18 | 2014-09-22 | 41 | 18d |  |  |  |  |
| 47 | 1.2.2.2.5 | administrador | 3d | 2014-09-18 | 2014-09-22 | 41 | 18d |  |  |  |  |
| 48 | 1.2.2.2.6 | gestor | 3d | 2014-09-18 | 2014-09-22 | 41 | 18d |  |  |  |  |
| 49 | 1.2.2.2.7 | recepcionista | 3d | 2014-09-18 | 2014-09-22 | 41 | 18d |  |  |  |  |
| 50 | 1.2.2.2.8 | evento | 3d | 2014-09-18 | 2014-09-22 | 41 | 18d |  |  |  |  |
| 51 | 1.2.2.2.9 | atividade | 3d | 2014-09-18 | 2014-09-22 | 41 | 18d |  |  |  |  |
| 52 | 1.2.2.2.10 | palestrante | 3d | 2014-09-18 | 2014-09-22 | 41 | 18d |  |  |  |  |
| 53 | 1.2.2.3 | **Regras de negócio (controler)** | 1d? | 2014-09-23 | 2014-09-23 |  | 17d |  |  |  |  |
| 54 | 1.2.2.3.1 | participante | 1d? | 2014-09-23 | 2014-09-23 |  | 17d |  | start no earlier than 2014-09-23 |  |  |
| 55 | 1.2.2.3.2 | endereço | 1d? | 2014-09-23 | 2014-09-23 |  | 17d |  | start no earlier than 2014-09-23 |  |  |
| 56 | 1.2.2.3.3 | grauinstrucao | 1d? | 2014-09-23 | 2014-09-23 |  | 17d |  | start no earlier than 2014-09-23 |  |  |
| 57 | 1.2.2.3.4 | perfil | 1d? | 2014-09-23 | 2014-09-23 |  | 17d |  | start no earlier than 2014-09-23 |  |  |
| 58 | 1.2.2.3.5 | administrador | 1d? | 2014-09-23 | 2014-09-23 |  | 17d |  | start no earlier than 2014-09-23 |  |  |
| 59 | 1.2.2.3.6 | gestor | 1d? | 2014-09-23 | 2014-09-23 |  | 17d |  | start no earlier than 2014-09-23 |  |  |
| 60 | 1.2.2.3.7 | recepcionista | 1d? | 2014-09-23 | 2014-09-23 |  | 17d |  | start no earlier than 2014-09-23 |  |  |
| 61 | 1.2.2.3.8 | evento | 1d? | 2014-09-23 | 2014-09-23 |  | 17d |  | start no earlier than 2014-09-23 |  |  |
| 62 | 1.2.2.3.9 | atividade | 1d? | 2014-09-23 | 2014-09-23 |  | 17d |  | start no earlier than 2014-09-23 |  |  |
| 63 | 1.2.2.3.10 | palestrante | 1d? | 2014-09-23 | 2014-09-23 |  | 17d |  | start no earlier than 2014-09-23 |  |  |

| ID | WBS | Task | Duration | Start | Finish | Total slack |
| --- | --- | --- | --- | --- | --- | --- |
| 65 | 1.3 | **Banco de dados** | 1d? | 2014-08-11 | 2014-08-12 | 47.62d |
| 79 | 1.3.1 | Modelo lógico | 1d? | 2014-08-11 | 2014-08-12 | 47.62d |
| 80 | 1.3.2 | Modelo físico | 1d? | 2014-08-11 | 2014-08-12 | 47.62d |
| 81 | 1.3.3 | Dicionario de dados | 1d? | 2014-08-11 | 2014-08-12 | 47.62d |
