# Cronograma_Eventos_v4

Schedule from MS Project, 2014-08-11 to 2014-11-12, A marks actual dates.
Clique & Brinde

## Calendars

- Padrão: Mon-Fri 09:00-12:00, 13:00-18:00; Sat-Sun off. Exceptions (off unless hours are given): 2014-09-07 (Feriado), 2014-10-12 (Feriado), 2014-10-15 (Feriado), 2014-11-02 (Feriado).

## Resources

| Resource |
| --- |
| Gustavo |
| Beatriz |
| Marco Aurélio |
| Allan |
| Mariana |
| Denis |
| Matheus,Marco Antonio |

## Schedule

| ID | WBS | Task | Duration | Start | Finish | Predecessors | Complete | Remaining | Total slack | Free slack | Constraint | Resources | Work | Actual work |
| --- | --- | --- | --- | --- | --- | --- | --- | --- | --- | --- | --- | --- | --- | --- |
| 1 | 1 | **Projeto Eventos** | 66.62d? | 2014-08-11 A | 2014-11-12 |  | 49% | 33.67d? | 0d |  |  |  | 1317.2h | 989.04h |
| 2 | 1.1 | **Documentação** | 20d | 2014-08-21 A | 2014-09-17 |  | 87% | 2.57d | 39d |  |  |  | 376h | 320.8h |
| 3 | 1.1.1 | Documento de arquitetura | 6d | 2014-08-25 A | 2014-09-01 |  | 70% | 1.8d | 51d |  | start no earlier than 2014-08-25 | Gustavo | 48h | 33.6h |
| 4 | 1.1.2 | Documento de Requisitos | 6d | 2014-08-25 A | 2014-09-01 |  | 95% | 0.3d | 1.6d | 0d | start no earlier than 2014-08-25 | Beatriz | 48h | 45.6h |
| 5 | 1.1.3 | Casos de uso | 4d | 2014-09-02 A | 2014-09-05 | 4 | 40% | 2.4d | 47d |  |  | Beatriz; Gustavo | 64h | 25.6h |
| 6 | 1.1.4 | Diagrama de classe | 3d | 2014-09-08 A | 2014-09-10 A | 5 | 100% |  |  |  | start no earlier than 2014-08-11 | Gustavo | 24h | 24h |
| 7 | 1.1.5 | Diagrama de atividade | 4d | 2014-09-08 A | 2014-09-11 A | 5 | 100% |  |  |  |  | Beatriz | 32h | 32h |
| 8 | 1.1.6 | Diagrama de sequencia | 4d | 2014-09-12 A | 2014-09-17 A | 7 | 100% |  |  |  |  | Gustavo | 32h | 32h |
| 9 | 1.1.7 | Wireframe | 8d | 2014-08-21 A | 2014-09-01 A |  | 100% |  |  |  | start no earlier than 2014-08-21 | Marco Aurélio; Allan | 128h | 128h |
| 11 | 1.2 | **Desenvolvimento** | 66.62d? | 2014-08-11 A | 2014-11-12 |  | 43% | 38.02d? | 0d |  |  |  | 941.2h | 668.24h |
| 12 | 1.2.1 | **Camada de interface** | 66.62d? | 2014-08-11 A | 2014-11-12 |  | 55% | 29.91d? | 0d |  |  |  | 909.2h | 668.24h |
| 13 | 1.2.1.1 | Escolha do framework da camada de interface | 4d | 2014-08-11 A | 2014-08-15 A |  | 100% |  |  |  | finish no earlier than 2014-08-15 | Marco Aurélio | 32h | 32h |
| 14 | 1.2.1.2 | Desenvolvimento do template padrão | 11d | 2014-09-01 A | 2014-09-15 A | 13 | 100% |  |  |  |  | Allan; Marco Aurélio | 101.2h | 101.2h |
| 15 | 1.2.1.3 | Treinamento da equipe no Bootstrap | 5d | 2014-09-08 A | 2014-09-12 A |  | 100% |  |  |  | start no earlier than 2014-09-08 | Mariana; Allan; Marco Aurélio; Denis | 160h | 160h |
| 16 | 1.2.1.4 | **Desenvolvimento das telas** | 66.62d? | 2014-08-11 A | 2014-11-12 |  | 41% | 39.11d? | 0d |  |  |  | 616h | 375.04h |
| 17 | 1.2.1.4.1 | Pagina inicial | 1d? | 2014-08-11 A | 2014-08-12 |  | 30% | 0.7d? | 65.62d |  |  |  |  |  |
| 18 | 1.2.1.4.2 | **Ambiente Gestor** | 18d | 2014-10-20 | 2014-11-12 |  |  |  | 0d |  |  |  |  |  |
| 19 | 1.2.1.4.2.1 | Cadastro de usuarios | 2d | 2014-10-20 | 2014-10-21 | 29 |  |  | 0d |  |  |  |  |  |
| 20 | 1.2.1.4.2.2 | Cadastro de eventos | 2d | 2014-10-22 | 2014-10-23 | 19 |  |  | 0d |  |  |  |  |  |
| 21 | 1.2.1.4.2.3 | Cadastro de atividades | 2d | 2014-10-24 | 2014-10-27 | 20 |  |  | 0d |  |  |  |  |  |
| 22 | 1.2.1.4.2.4 | Cadastro de salas | 2d | 2014-10-28 | 2014-10-29 | 21 |  |  | 0d |  |  |  |  |  |
| 23 | 1.2.1.4.2.5 | Relatórios | 8d | 2014-10-30 | 2014-11-10 | 22 |  |  | 0d |  |  |  |  |  |
| 24 | 1.2.1.4.2.6 | Alteração de presença | 2d | 2014-11-11 | 2014-11-12 | 23 |  |  | 0d |  |  |  |  |  |
| 25 | 1.2.1.4.3 | **Ambiente Usuário** | 29d | 2014-09-08 A | 2014-10-17 |  | 58% | 12.27d | 18d |  |  |  | 616h | 375.04h |
| 26 | 1.2.1.4.3.1 | Tela inicial | 3d | 2014-10-07 A | 2014-10-09 | 30 | 60% | 1.2d | 23d |  | start no earlier than 2014-09-22 | Mariana | 24h | 14.4h |
| 27 | 1.2.1.4.3.2 | Login | 2d | 2014-09-30 A | 2014-10-01 | 34 | 80% | 0.4d | 29d |  | start no earlier than 2014-09-08 | Allan | 16h | 12.8h |
| 28 | 1.2.1.4.3.3 | Dados pessoais do usuário (consutar e alterar) | 3d | 2014-09-30 A | 2014-10-02 | 34 | 30% | 2.1d | 0d |  | start no earlier than 2014-09-22 | Denis | 24h | 7.2h |
| 29 | 1.2.1.4.3.4 | Inscrições do usuário (agenda/certificado) | 10d | 2014-10-03 | 2014-10-17 | 28 |  |  | 0d |  | start no earlier than 2014-09-08 | Marco Aurélio; Allan | 160h |  |
| 30 | 1.2.1.4.3.5 | Cadastro de usuarios no site | 5d | 2014-09-30 | 2014-10-06 | 34 |  |  | 1.8d | 0d | start no earlier than 2014-09-08 | Mariana | 40h |  |
| 31 | 1.2.1.4.3.6 | Seleção de eventos | 6d | 2014-09-08 A | 2014-09-15 |  | 99% | 0.06d | 4.95d | 0d | start no earlier than 2014-09-08 | Marco Aurélio; Allan | 96h | 95.04h |
| 32 | 1.2.1.4.3.7 | Evento selecionado | 5d | 2014-09-16 A | 2014-09-22 | 31 | 99% | 0.05d | 4.95d | 0d | start no earlier than 2014-09-08 | Marco Aurélio; Allan | 80h | 79.2h |
| 33 | 1.2.1.4.3.8 | Inscrição atividade | 5d | 2014-09-23 A | 2014-09-29 | 32 | 99% | 0.05d | 0.9d | 0d | start no earlier than 2014-09-08 | Mariana; Marco Aurélio | 80h | 79.2h |
| 34 | 1.2.1.4.3.9 | Atividade selecionada | 5d | 2014-09-23 A | 2014-09-29 | 33FF | 90% | 0.5d | 0.9d | 0d | start no earlier than 2014-09-08 | Denis; Allan | 80h | 72h |
| 35 | 1.2.1.4.3.10 | Contato | 2d | 2014-09-15 A | 2014-09-16 |  | 95% | 0.1d | 40d |  | start no earlier than 2014-09-15 | Denis | 16h | 15.2h |

| ID | WBS | Task | Duration | Start | Finish | Predecessors | Complete | Remaining | Total slack | Constraint | Resources | Work |
| --- | --- | --- | --- | --- | --- | --- | --- | --- | --- | --- | --- | --- |
| 36 | 1.2.2 | **Camada de negócios** | 17d? | 2014-09-12 A | 2014-10-06 |  | 32% | 11.57d? | 26d |  |  | 32h |
| 37 | 1.2.2.1 | Definição do modelo de desenvolvimento | 4d | 2014-09-12 | 2014-09-17 |  |  |  | 39d | start no earlier than 2014-09-12 | Matheus,Marco Antonio | 32h |
| 38 | 1.2.2.2 | **Criação das classes** | 3d | 2014-09-18 A | 2014-09-22 A |  | 100% |  |  |  |  |  |
| 39 | 1.2.2.2.1 | participante | 3d | 2014-09-18 A | 2014-09-22 A | 37 | 100% |  |  |  |  |  |
| 40 | 1.2.2.2.2 | endereço | 3d | 2014-09-18 A | 2014-09-22 A | 37 | 100% |  |  |  |  |  |
| 41 | 1.2.2.2.3 | grauinstrucao | 3d | 2014-09-18 A | 2014-09-22 A | 37 | 100% |  |  |  |  |  |
| 42 | 1.2.2.2.4 | perfil | 3d | 2014-09-18 A | 2014-09-22 A | 37 | 100% |  |  |  |  |  |
| 43 | 1.2.2.2.5 | administrador | 3d | 2014-09-18 A | 2014-09-22 A | 37 | 100% |  |  |  |  |  |
| 44 | 1.2.2.2.6 | gestor | 3d | 2014-09-18 A | 2014-09-22 A | 37 | 100% |  |  |  |  |  |
| 45 | 1.2.2.2.7 | recepcionista | 3d | 2014-09-18 A | 2014-09-22 A | 37 | 100% |  |  |  |  |  |
| 46 | 1.2.2.2.8 | evento | 3d | 2014-09-18 A | 2014-09-22 A | 37 | 100% |  |  |  |  |  |
| 47 | 1.2.2.2.9 | atividade | 3d | 2014-09-18 A | 2014-09-22 A | 37 | 100% |  |  |  |  |  |
| 48 | 1.2.2.2.10 | palestrante | 3d | 2014-09-18 A | 2014-09-22 A | 37 | 100% |  |  |  |  |  |
| 49 | 1.2.2.3 | **Regras de negócio (controler)** | 6d? | 2014-09-29 | 2014-10-06 |  |  |  | 26d |  |  |  |
| 50 | 1.2.2.3.1 | participante | 6d? | 2014-09-29 | 2014-10-06 |  |  |  | 26d | finish no earlier than 2014-10-06 |  |  |
| 51 | 1.2.2.3.2 | endereço | 6d? | 2014-09-29 | 2014-10-06 |  |  |  | 26d | finish no earlier than 2014-10-06 |  |  |
| 52 | 1.2.2.3.3 | grauinstrucao | 6d? | 2014-09-29 | 2014-10-06 |  |  |  | 26d | finish no earlier than 2014-10-06 |  |  |
| 53 | 1.2.2.3.4 | perfil | 6d? | 2014-09-29 | 2014-10-06 |  |  |  | 26d | finish no earlier than 2014-10-06 |  |  |
| 54 | 1.2.2.3.5 | administrador | 6d? | 2014-09-29 | 2014-10-06 |  |  |  | 26d | finish no earlier than 2014-10-06 |  |  |
| 55 | 1.2.2.3.6 | gestor | 6d? | 2014-09-29 | 2014-10-06 |  |  |  | 26d | finish no earlier than 2014-10-06 |  |  |
| 56 | 1.2.2.3.7 | recepcionista | 6d? | 2014-09-29 | 2014-10-06 |  |  |  | 26d | finish no earlier than 2014-10-06 |  |  |
| 57 | 1.2.2.3.8 | evento | 6d? | 2014-09-29 | 2014-10-06 |  |  |  | 26d | finish no earlier than 2014-10-06 |  |  |
| 58 | 1.2.2.3.9 | atividade | 6d? | 2014-09-29 | 2014-10-06 |  |  |  | 26d | finish no earlier than 2014-10-06 |  |  |
| 59 | 1.2.2.3.10 | palestrante | 6d? | 2014-09-29 | 2014-10-06 |  |  |  | 26d | finish no earlier than 2014-10-06 |  |  |

| ID | WBS | Task | Duration | Start | Finish | Total slack |
| --- | --- | --- | --- | --- | --- | --- |
| 61 | 1.3 | **Banco de dados** | 1d? | 2014-08-11 | 2014-08-12 | 65.62d |
| 62 | 1.3.1 | Modelo lógico | 1d? | 2014-08-11 | 2014-08-12 | 65.62d |
| 63 | 1.3.2 | Modelo físico | 1d? | 2014-08-11 | 2014-08-12 | 65.62d |
| 64 | 1.3.3 | Dicionario de dados | 1d? | 2014-08-11 | 2014-08-12 | 65.62d |
